# Организация производства стальных крепёжных уголков

Schedule from ProjectLibre, 2023-01-09 to 2030-06-24.

## Calendars

- Пятидневка: Mon-Fri 08:00-12:00, 13:00-17:00; Sat-Sun off.

## Resources

| Resource | Rate |
| --- | --- |
| Не назначено |  |
| Руководитель проекта | 2340 |
| Менеджер по снабжению и сбыту №1 | 1200 |
| Менеджер по снабжению и сбыту №2 | 1200 |
| Инженер-технолог | 1800 |
| Инженер-конструктор | 1400 |
| Экономист | 1000 |
| Юрист | 800 |
| Мастер | 1300 |

## Schedule

| ID | Task | Duration | Start | Finish | Predecessors | Constraint | Resources |
| --- | --- | --- | --- | --- | --- | --- | --- |
| 1 | Маркетинговое исследование рынка | 5d | 2023-01-09 | 2023-01-13 |  |  | Руководитель проекта |
| 2 | Прогнозирование объема продаж продукции нового цеха | 2d | 2023-02-06 | 2023-02-07 | 19 |  | Менеджер по снабжению и сбыту №1 |
| 3 | Планирование сбыта, поиск покупателей | 20d | 2023-02-08 | 2023-03-07 | 2, 19 |  | Менеджер по снабжению и сбыту №1 |
| 4 | Планирование снабжения, поиск поставщиков | 10d | 2023-02-06 | 2023-02-17 | 19 |  | Менеджер по снабжению и сбыту №2 |
| 5 | Разработка конструкторско-технологической документации по производству стальных уголков | 3d | 2023-02-06 | 2023-02-08 | 19 |  | Инженер-конструктор |
| 6 | Разработка конструкторско-технологической документации по производству пресс форм для стальных уголков | 4d | 2023-02-09 | 2023-02-14 | 5 |  | Инженер-конструктор |
| 7 | Составление перечня необходимого для нового цеха оборудования | 1d | 2023-02-15 | 2023-02-15 | 6 |  | Инженер-технолог |
| 8 | Расчет потребности в оборудовании | 1d | 2023-02-16 | 2023-02-16 | 2, 7 |  | Руководитель проекта; Экономист |
| 9 | Расчет потребности в площадях цеха | 1d | 2023-02-20 | 2023-02-20 | 8, 17 |  | Руководитель проекта [50%]; Экономист [50%] |
| 10 | Составление плана цеха | 3d | 2023-02-21 | 2023-02-23 | 9 |  | Руководитель проекта [80%]; Инженер-технолог |
| 11 | Расчёт потребности материалов, инструментов, оснастки | 0.5d | 2023-02-20 | 2023-02-20 | 4, 8 |  | Экономист |
| 12 | Расчёт прибыли и показателей экономической эффективности проекта | 1d | 2023-02-24 | 2023-02-24 | 10, 11 |  | Менеджер по снабжению и сбыту №2; Руководитель проекта; Экономист |
| 13 | Калькуляция себестоимости продукции нового цеха | 1d | 2023-03-08 | 2023-03-08 | 3, 11, 12, 17 |  | Экономист |
| 14 | Прогнозирование доходов от продажи продукции нового цеха | 0.5d | 2023-03-09 | 2023-03-09 | 3, 13 | start no earlier than 2022-11-10 | Менеджер по снабжению и сбыту №1; Экономист |
| 15 | Расчет показателей экономической эффективности проекта | 0.5d | 2023-03-09 | 2023-03-09 | 12, 13, 14 |  | Экономист |
| 16 | Оценка роста показателей эффективности работ всего предприятия от расширения проекта | 1d | 2023-03-10 | 2023-03-10 | 15 |  | Руководитель проекта [80%]; Экономист [80%] |
| 17 | Определение потребности в персонале для нового цеха по количеству и квалификации | 1d | 2023-02-17 | 2023-02-17 | 8 |  | Руководитель проекта |
| 18 | Запрос в отдел кадров о потребности в персонале | 0.2d | 2023-02-20 | 2023-02-20 | 17 |  | Руководитель проекта |
| 19 | Создание команды проекта | 15d | 2023-01-16 | 2023-02-03 | 1 |  | Руководитель проекта |
| 20 | Принятие решения о переходе к организации нового цеха | 2d | 2023-03-13 | 2023-03-14 | 16 |  | Руководитель проекта [90%] |
| 21 | Заключение договоров с поставщиками | 7d | 2023-03-15 | 2023-03-23 | 20 |  | Менеджер по снабжению и сбыту №1 [50%]; Юрист [10%] |
| 22 | Заключение договоров с потребителями | 6d | 2023-03-15 | 2023-03-22 | 20 |  | Менеджер по снабжению и сбыту №2; Юрист [10%] |
| 23 | Заказ пресс форм для уголков нового типоразмера | 0.23d | 2023-03-15 | 2023-03-15 | 20 |  | Руководитель проекта [5%]; Инженер-технолог [20%] |
| 24 | Поиск и аренда помещения | 10d | 2023-03-15 | 2023-03-28 | 20 | start no earlier than 2022-11-23 | Инженер-технолог [20%]; Менеджер по снабжению и сбыту №1 [50%] |
| 25 | Обустройство помещения в соответствии с нормами | 10d | 2023-03-29 | 2023-04-11 | 24 |  | Инженер-технолог [20%] |
| 26 | Определение единиц оборудования, которое уже есть на предприятии и переводится в новый цех | 2.86d | 2023-04-12 | 2023-04-14 | 20, 25 |  | Инженер-технолог [70%]; Руководитель проекта [70%] |
| 27 | Транспортировка имеющегося оборудования в новый цех | 4.5d | 2023-04-14 | 2023-04-21 | 25, 26 |  | Инженер-технолог [20%]; Руководитель проекта [5%] |
| 28 | Организация транспортировки нового закупаемого оборудования от поставщиков новый цех | 25d | 2023-04-21 | 2023-05-26 | 21, 27 |  | Менеджер по снабжению и сбыту №1 [1%]; Инженер-технолог [5%] |
| 29 | Установка и наладка оборудования | 10d | 2023-05-26 | 2023-06-09 | 27, 28 |  | Инженер-технолог [50%] |
| 30 | Закупка и доставка материалов, инструмента, оснастки для нового цеха | 7d | 2023-03-24 | 2023-04-04 | 21, 44 |  | Менеджер по снабжению и сбыту №1 [1%] |
| 31 | Пробный запуск производства | 1d | 2023-06-16 | 2023-06-19 | 29, 30, 43 |  | Инженер-технолог; Руководитель проекта |
| 32 | Утверждение бюджета проекта по периодам (годам, месяцам) | 3d | 2023-03-15 | 2023-03-17 | 20 | start no earlier than 2022-11-18 | Экономист [50%]; Руководитель проекта [50%] |
| 33 | Оплата аренды помещения | 1d | 2023-03-29 | 2023-03-29 | 24 |  | Экономист [20%] |
| 34 | Оплата обустройства помещения цеха | 1d | 2023-04-12 | 2023-04-12 | 25 |  | Экономист [20%] |
| 35 | Оплата покупки и доставки оборудования | 1d | 2023-05-26 | 2023-05-29 | 28 |  | Экономист [20%] |
| 36 | Оплата покупки и доставки материала, инструмента, оснастки | 1d | 2023-04-04 | 2023-04-05 | 30 |  | Экономист [20%] |
| 37 | Оплата рабочим цеха работ по пробному запуску производства | 1d | 2023-06-19 | 2023-06-20 | 31 |  | Экономист [20%] |
| 38 | Оплата обучения новых рабочих | 1d | 2023-06-16 | 2023-06-19 | 43 |  | Экономист [20%] |
| 39 | Расчет ЗП и ее выплата руководителю и команде проекта | 1d | 2023-06-20 | 2023-06-21 | 32, 48 |  | Экономист [20%] |
| 40 | Перевод некоторых работников предприятия в новый цех | 20d | 2023-02-20 | 2023-03-20 | 18 |  | Руководитель проекта [2%] |
| 41 | Поиск, собеседование, отбор персонала в новый цех на рынке труда | 20d | 2023-03-20 | 2023-04-17 | 18, 40 |  | Руководитель проекта [10%]; Инженер-технолог [10%] |
| 42 | Заключение с новым персоналом трудовых договоров | 5d | 2023-04-17 | 2023-04-24 | 41 |  | Руководитель проекта [5%] |
| 43 | Обучение персонала | 5d | 2023-06-09 | 2023-06-16 | 46, 47 |  | Мастер; Инженер-технолог [20%] |
| 44 | Контроль заключения договоров с поставщиками и покупателями | 0.2d | 2023-03-24 | 2023-03-24 | 21, 22, 23 |  | Руководитель проекта |
| 45 | Контроль готовности помещения цеха | 0.2d | 2023-04-13 | 2023-04-13 | 34 |  | Руководитель проекта |
| 46 | Контроль готовности оборудования и оснастки к эксплуатации | 0.2d | 2023-06-09 | 2023-06-09 | 29 |  | Руководитель проекта |
| 47 | Контроль полноты штата работников цеха | 0.2d | 2023-04-24 | 2023-04-24 | 40, 42 |  | Руководитель проекта |
| 48 | Контроль выплат по договорам | 0.2d | 2023-06-20 | 2023-06-20 | 33, 35, 36, 37, 45 |  | Руководитель проекта |
| 49 | Принятие решения о запуске цеха в эксплуатацию | 0.5d | 2023-06-21 | 2023-06-22 | 39 |  | Руководитель проекта |
| 50 | Эксплуатация цеха в первый год | 260d | 2023-06-22 | 2024-06-20 | 49 |  |  |
| 51 | Контроль хода производственного процесса, денежного потока, продаж нового цеха в конце первого года | 1d | 2024-06-20 | 2024-06-21 | 50 |  | Руководитель проекта |
| 52 | Эксплуатация цеха во второй год | 260d | 2024-06-21 | 2025-06-20 | 51 |  |  |
| 53 | Контроль хода производственного процесса, денежного потока, продаж нового цеха в конце второго года | 1d | 2025-06-20 | 2025-06-23 | 52 |  | Руководитель проекта |
| 54 | Эксплуатация цеха в третий год | 260d | 2025-06-23 | 2026-06-22 | 53 |  |  |
| 55 | Контроль хода производственного процесса, денежного потока, продаж нового цеха в конце третьего года | 1d | 2026-06-22 | 2026-06-23 | 54 |  | Руководитель проекта |
| 56 | Эксплуатация цеха в четвертый год | 260d | 2026-06-23 | 2027-06-22 | 55 |  |  |
| 57 | Контроль хода производственного процесса, денежного потока, продаж нового цеха в конце четвёртого года | 1d | 2027-06-22 | 2027-06-23 | 56 |  | Руководитель проекта |
| 58 | Эксплуатация цеха в пятый год | 260d | 2027-06-23 | 2028-06-21 | 57 |  |  |
| 59 | Контроль хода производственного процесса, денежного потока, продаж нового цеха в конце пятого года | 1d | 2028-06-21 | 2028-06-22 | 58 |  | Руководитель проекта |
| 60 | Эксплуатация цеха в шестой год | 260d | 2028-06-22 | 2029-06-21 | 59 |  |  |
| 61 | Контроль хода производственного процесса, денежного потока, продаж нового цеха в конце шестого года | 1d | 2029-06-21 | 2029-06-22 | 60 |  | Руководитель проекта |
| 62 | Эксплуатация цеха в седьмой год | 260d | 2029-06-22 | 2030-06-21 | 61 |  |  |
| 63 | Оценка фактических показателей эффективности проекта | 1d | 2030-06-21 | 2030-06-24 | 62 |  | Руководитель проекта |
